# Automated Conveyor Belt

Schedule from MS Project, 2024-01-01 to 2024-11-11, status date 2024-03-31, costs in $, A marks actual dates.

## Calendars

- Standard: Mon-Sun 08:00-12:00, 13:00-17:00.

## Resources

| Resource | Rate |
| --- | --- |
| Design | 225 |
| Development | 130 |
| Documentation | 75 |
| Assembly/Test | 65 |
| Purchasing | 50 |

## Schedule

| ID | Task | Duration | Start | Finish | Predecessors | Complete | Remaining | Baseline start | Baseline finish | Baseline duration | Total slack | Free slack | Constraint | Resources | Work | Actual work | Cost | Baseline cost | Actual cost |
| --- | --- | --- | --- | --- | --- | --- | --- | --- | --- | --- | --- | --- | --- | --- | --- | --- | --- | --- | --- |
| 1 | System architecture | 40d | 2024-01-01 A | 2024-02-09 A |  | 100% |  | 2024-01-01 | 2024-02-09 | 40d |  |  |  | Design | 320h | 320h | 72,000 | 72,000 | 72,000 |
| 2 | Hardware specifications | 59d | 2024-02-10 A | 2024-04-08 | 1 | 32% | 40d | 2024-02-10 | 2024-03-30 | 50d | 0d |  | must start on 2024-02-10 | Design; Development | 944h | 304h | 167,560 | 142,000 | 53,960 |
| 3 | Kernel specifications | 29d | 2024-02-10 A | 2024-03-09 | 1 | 66% | 10d | 2024-02-10 | 2024-02-29 | 20d | 0d |  | must start on 2024-02-10 | Design | 232h | 152h | 52,200 | 36,000 | 34,200 |
| 4 | Utilities Specification | 39d | 2024-02-10 A | 2024-03-19 | 1 | 49% | 20d | 2024-02-10 | 2024-03-05 | 25d | 0d |  | must start on 2024-02-10 | Design; Development | 624h | 304h | 110,760 | 71,000 | 53,960 |
| 5 | Hardware Design | 23.33d | 2024-04-09 | 2024-05-02 | 2 |  |  | 2024-04-25 | 2024-05-18 | 23.33d | 80d | 0d |  | Design [300%]; Development [300%] | 1120h |  | 198,800 | 198,800 |  |
| 6 | Disk drivers | 90d | 2024-05-02 | 2024-07-31 | 3 |  |  | 2024-03-26 | 2024-06-24 | 90d | 0d |  |  | Assembly/Test; Development [300%] | 1440h |  | 140,400 | 140,400 |  |
| 7 | Memory management | 37d | 2024-05-31 | 2024-07-06 | 3 |  |  | 2024-05-18 | 2024-06-23 | 37d | 24.33d |  |  | Development | 600h |  | 97,760 | 97,760 |  |
| 8 | Operating system documentation | 15d | 2024-03-14 | 2024-03-29 | 3 |  |  | 2024-03-06 | 2024-03-21 | 15d | 123.67d |  |  | Design [300%]; Documentation | 240h |  | 36,000 | 36,000 |  |
| 9 | Routine utilities | 56d | 2024-06-02 | 2024-07-27 | 4 |  |  | 2024-05-19 | 2024-07-13 | 56d | 3.33d |  |  | Development | 480h |  | 64,480 | 64,480 |  |
| 10 | Complex utilities | 45d | 2024-06-02 | 2024-07-16 | 4 |  |  | 2024-05-19 | 2024-07-02 | 45d | 14.33d |  |  | Development | 720h |  | 117,000 | 117,000 |  |
| 11 | Utilities documentation | 10d | 2024-03-29 | 2024-04-08 | 4 |  |  | 2024-05-18 | 2024-05-27 | 10d | 113.67d |  |  | Design; Documentation | 160h |  | 24,000 | 24,000 |  |
| 12 | Hardware documentation | 10d | 2024-05-02 | 2024-05-12 | 5 |  |  | 2024-05-28 | 2024-06-06 | 10d | 80d |  |  | Design; Documentation | 160h |  | 24,000 | 24,000 |  |
| 13 | Integration first phase | 3d | 2024-07-31 | 2024-08-03 | 6, 7, 8, 9, 10, 11, 12 |  |  | 2024-07-14 | 2024-07-16 | 3d | 0d |  |  | Assembly/Test; Development | 560h |  | 79,560 | 79,560 |  |
| 14 | Prototypes | 32d | 2024-08-03 | 2024-09-04 | 13 |  |  | 2024-07-17 | 2024-08-17 | 32d | 10d |  |  | Assembly/Test; Development | 1040h |  | 127,140 | 127,140 |  |
| 15 | Serial I/O drivers | 42d | 2024-08-03 | 2024-09-14 | 13 |  |  | 2024-07-17 | 2024-08-27 | 42d | 0d |  |  | Development | 680h |  | 110,760 | 110,760 |  |
| 16 | System hard/software test | 7d | 2024-09-14 | 2024-09-21 | 14, 15 |  |  | 2024-08-28 | 2024-09-03 | 7d | 0d |  |  | Assembly/Test | 120h |  | 9,880 | 9,880 |  |
| 17 | Order printed circuit boards | 5d | 2024-09-21 | 2024-09-26 | 16 |  |  | 2024-09-04 | 2024-09-08 | 5d | 6.11d | 0d |  | Purchasing | 40h |  | 2,000 | 2,000 |  |
| 18 | Network interface | 8.33d | 2024-10-14 | 2024-10-22 | 16 |  |  | 2024-09-25 | 2024-10-03 | 8.33d | 0d |  |  | Development [300%] | 200h |  | 26,000 | 26,000 |  |
| 19 | Shell | 20d | 2024-09-21 | 2024-10-11 | 16 |  |  | 2024-09-04 | 2024-09-23 | 20d | 11.11d |  |  | Development | 160h |  | 20,800 | 20,800 |  |
| 20 | Project documentation | 20d | 2024-09-21 | 2024-10-11 | 16 |  |  | 2024-09-04 | 2024-09-23 | 20d | 11.11d |  |  | Development; Documentation | 320h |  | 32,800 | 32,800 |  |
| 21 | Assemble preproduction | 15d | 2024-10-01 | 2024-10-16 | 17FS+5d |  |  | 2024-09-14 | 2024-09-28 | 15d | 6.11d |  |  | Assembly/Test; Development | 240h |  | 23,400 | 23,400 |  |
| 22 | Integrated acceptance test | 20d | 2024-10-22 | 2024-11-11 | 18, 19, 20, 21 |  |  | 2024-10-04 | 2024-10-23 | 20d | 0d |  |  | Assembly/Test; Development | 320h |  | 31,200 | 31,200 |  |
